# 广菲克DMS CLOUD项目计划

How a schedule from MS Project changed from version to version. A marks actual dates.

## Version 1 (saved 2017-05-17)

| ID | WBS | Task | Duration | Start | Finish | Predecessors | Complete | Total float | Constraint |
| --- | --- | --- | --- | --- | --- | --- | --- | --- | --- |
| 1 | WBS-4 | **开发** | 166d? | 2016-11-14 A | 2017-07-06 |  | 32% | 0d |  |
| 2 | WBS-4.1 | **功能开发** | 166d? | 2016-11-14 A | 2017-07-06 |  | 32% | 0d |  |
| 3 | WBS-4.1.2 | **DMS售后模块** | 166d? | 2016-11-14 A | 2017-07-06 |  | 32% | 0d |  |
| 4 | WBS-4.1.2.1 | **系统管理** | 43d | 2017-03-20 A | 2017-05-19 |  | 85% | 33d |  |
| 5 |  | 工种定义 | 1d | 2017-03-20 A | 2017-03-20 A |  | 100% |  |  |
| 6 |  | 班组定义 | 1d | 2017-03-21 A | 2017-03-21 A |  | 100% |  | must start on 2017-03-21 |
| 7 |  | 仓库定义 | 1.5d | 2017-03-20 A | 2017-03-21 A |  | 100% |  |  |
| 8 |  | 配件车型组定义 | 1d | 2017-03-22 A | 2017-03-22 A |  | 100% |  |  |
| 9 |  | 计量单位 | 3d | 2017-03-31 A | 2017-04-05 A |  | 100% |  | finish no earlier than 2017-04-01 |
| 10 |  | 会计周期 | 2d | 2017-04-06 A | 2017-04-07 A | 9 | 100% |  | finish no earlier than 2017-04-07 |
| 11 |  | 业务往来客户类型 | 1d | 2017-03-22 A | 2017-03-22 A | 7 | 100% |  |  |
| 12 |  | 订货公式定义 | 1d | 2017-03-22 A | 2017-03-22 A |  | 100% |  |  |
| 13 |  | 附加项目 | 1d | 2017-03-21 A | 2017-03-21 A | 5 | 100% |  |  |
| 14 |  | 优惠模式 | 1d | 2017-03-23 A | 2017-03-23 A | 11 | 100% |  |  |
| 15 |  | 收费区分 | 1d | 2017-03-22 A | 2017-03-22 A | 13 | 100% |  |  |
| 16 |  | 收费类别 | 2d | 2017-03-24 A | 2017-03-27 A | 14 | 100% |  |  |
| 17 |  | 其他成本 | 1d | 2017-04-10 A | 2017-04-10 A | 10 | 100% |  |  |
| 18 |  | 预约类别 | 1d | 2017-03-22 A | 2017-03-22 A |  | 100% |  |  |
| 19 |  | 预约限量 | 1d | 2017-03-22 A | 2017-03-22 A | 6 | 100% |  |  |
| 20 |  | 工时单价 | 1d | 2017-03-28 A | 2017-03-28 A | 16 | 100% |  |  |
| 21 |  | 借进归还 | 1d | 2017-03-22 A | 2017-03-22 A |  | 100% |  |  |
| 22 |  | 组合类别 | 1d | 2017-03-23 A | 2017-03-23 A | 19 | 100% |  |  |
| 23 |  | 维修工位 | 1d | 2017-03-23 A | 2017-03-23 A | 8 | 100% |  |  |
| 24 |  | 故障描述 | 1d | 2017-03-24 A | 2017-03-24 A | 23 | 100% |  |  |
| 25 |  | 保险公司 | 2d | 2017-03-23 A | 2017-03-24 A | 21 | 100% |  |  |
| 26 |  | 险种定义 | 1.5d | 2017-03-24 A | 2017-03-27 A | 22 | 100% |  |  |
| 27 |  | 车型修理项目分组代码 | 1d | 2017-03-27 A | 2017-03-27 A | 25 | 100% |  |  |
| 28 |  | 维修项目分类 | 2d | 2017-03-23 A | 2017-03-24 A | 15 | 100% |  |  |
| 29 |  | 装潢项目类型 | 2d | 2017-04-11 A | 2017-04-12 A | 17 | 100% |  |  |
| 30 |  | 限价车系及维修类型 | 1d | 2017-03-27 A | 2017-03-27 A | 24 | 100% |  |  |
| 31 |  | 用户映射 | 3d | 2017-05-12 A | 2017-05-16 |  |  | 29d |  |
| 32 |  | 基本参数设置 | 3d | 2017-03-23 A | 2017-03-27 A | 12 | 100% |  |  |
| 33 |  | 用户提醒映射配置 | 3d | 2017-03-22 A | 2017-03-24 |  |  | 71d |  |
| 34 |  | 工具类别 | 1d | 2017-04-13 A | 2017-04-13 A | 29 | 100% |  | start no earlier than 2017-03-30 |
| 35 |  | 操作日志 | 2d | 2017-05-18 A | 2017-05-19 A | 145 | 100% |  | start no earlier than 2016-12-21 |
| 36 |  | 技师考勤登记 | 1d | 2017-05-19 A | 2017-05-19 |  |  | 26d | start no earlier than 2016-12-15 |
| 37 | WBS-4.1.2.2 | **客户管理** | 59.5d | 2017-03-23 A | 2017-06-19 |  | 58% | 13.5d |  |
| 38 |  | 车主车辆管理 | 4d | 2017-05-10 A | 2017-05-16 A | 133 | 100% |  |  |
| 39 |  | 专属客户经理绑定 | 2d | 2017-03-29 A | 2017-03-30 A | 20 | 100% |  |  |
| 40 |  | 微信平台车主信息回传 | 2d | 2017-03-23 A | 2017-03-24 A | 18 | 100% |  |  |
| 41 |  | 微信平台客户经理绑定修改 | 2d | 2017-03-27 A | 2017-03-28 A | 40 | 100% |  |  |
| 42 |  | 客户预约安排 | 5d | 2017-03-28 A | 2017-04-01 | 27 | 80% | 41.9d |  |
| 43 |  | 预约状况查询 | 3d | 2017-04-05 A | 2017-04-07 | 42 | 20% | 41.3d |  |
| 44 |  | 预约汇总表 | 2.5d | 2017-04-10 A | 2017-04-12 A | 43 | 100% |  |  |
| 45 |  | 车主微信预约管理 | 2d | 2017-03-28 A | 2017-03-29 A | 32 | 100% |  |  |
| 46 |  | 定期保养提醒 | 3.5d | 2017-03-29 A | 2017-04-01 | 41 | 88% | 59.91d |  |
| 47 |  | 保险到期提醒 | 3.5d | 2017-04-01 A | 2017-04-07 | 46 | 85% | 56.94d |  |
| 48 |  | 保修到期提醒 | 3.5d | 2017-04-10 A | 2017-04-13 | 47 | 85% | 53.96d |  |
| 49 |  | 业务往来客户 | 2.5d | 2017-03-28 A | 2017-03-30 A | 30 | 100% |  |  |
| 50 |  | 监控信息设定 | 2.5d | 2017-04-13 A | 2017-04-17 | 48 | 30% | 53.84d |  |
| 51 |  | 车辆过户 | 2.5d | 2017-03-31 A | 2017-04-05 A | 26 | 100% |  | start no earlier than 2017-03-31 |
| 52 |  | 车牌号更改与合并 | 2.5d | 2017-05-24 A | 2017-05-26 | 54 | 20% | 28.5d | start no earlier than 2017-04-05 |
| 53 |  | 验车到期提醒 | 4d | 2017-05-12 A | 2017-05-18 | 74 | 20% | 29d | start no earlier than 2017-03-20 |
| 54 |  | 新车提醒 | 3.5d | 2017-05-18 | 2017-05-23 | 53 |  | 29d | start no earlier than 2017-03-24 |
| 55 |  | 车主生日函 | 3.5d | 2017-06-06 | 2017-06-09 | 170 |  | 13.5d | start no earlier than 2017-03-29 |
| 56 |  | 维修建议查询 | 2d | 2017-04-25 A | 2017-04-26 | 108 | 98% | 49d | start no earlier than 2017-04-01 |
| 57 |  | 客户生日提醒 | 2.5d | 2017-06-12 | 2017-06-14 | 55 |  | 13.5d | start no earlier than 2017-04-10 |
| 58 |  | 客户投诉接待 | 3d | 2017-04-27 A | 2017-05-02 A | 56 | 100% |  | start no earlier than 2017-04-20 |
| 59 |  | 客户投诉查询 | 2.5d | 2017-05-03 A | 2017-05-05 A | 58 | 100% |  | start no earlier than 2017-04-21 |
| 60 |  | 客户投诉处理及分析 | 2.5d | 2017-05-05 A | 2017-05-09 | 59 | 98% | 17.91d | start no earlier than 2017-04-24 |
| 61 |  | 客户投诉结案 | 2.5d | 2017-05-10 A | 2017-05-12 | 60 | 98% | 15.46d | start no earlier than 2017-04-25 |
| 62 |  | 客户投诉处理情况 | 2d | 2017-05-12 A | 2017-05-16 | 61 | 98% | 13.5d | start no earlier than 2017-04-26 |
| 63 |  | 分配回访任务 | 3.5d | 2017-05-05 | 2017-05-10 | 153 |  | 29.5d | start no earlier than 2017-05-02 |
| 64 |  | 录入回访结果 | 4d | 2017-05-10 | 2017-05-16 | 63 |  | 29.5d | start no earlier than 2017-03-20 |
| 65 |  | 回访结果查询 | 3d | 2017-05-16 | 2017-05-19 | 64 |  | 29.5d | start no earlier than 2017-03-24 |
| 66 |  | 回访结果汇总报表 | 4d | 2017-05-19 | 2017-05-25 | 65 |  | 29.5d | start no earlier than 2017-03-29 |
| 67 |  | 客户流失报警 | 4d | 2017-04-05 A | 2017-04-11 | 51 | 80% | 44.33d | start no earlier than 2017-04-05 |
| 68 |  | 流失报警录入回访 | 4d | 2017-04-11 A | 2017-04-17 | 67 | 80% | 41.12d | start no earlier than 2017-04-11 |
| 69 |  | 流失报警回访结果查询 | 3d | 2017-04-17 A | 2017-04-20 | 68 | 80% | 38.73d | start no earlier than 2017-04-17 |
| 70 |  | 问卷制作 | 1d | 2017-05-17 A | 2017-05-18 | 92 | 70% | 34.5d | start no earlier than 2017-04-24 |

| ID | WBS | Task | Duration | Start | Finish | Predecessors | Complete | Total float | Constraint |
| --- | --- | --- | --- | --- | --- | --- | --- | --- | --- |
| 71 |  | 客户消费排行 | 3d | 2017-06-14 | 2017-06-19 | 57 |  | 13.5d | start no earlier than 2017-04-25 |
| 72 |  | 面访录入 | 2d | 2017-04-18 | 2017-04-19 |  |  | 54d | start no earlier than 2017-04-18 |
| 73 | WBS-4.1.2.48 | **衍生业务** | 15d | 2017-04-20 A | 2017-05-12 |  | 33% | 29.8d |  |
| 74 |  | 装潢套餐管理 | 2.5d | 2017-05-10 | 2017-05-12 | 76 |  | 29.8d | start no earlier than 2017-04-14 |
| 75 |  | 保险投保单 | 3.5d | 2017-04-20 A | 2017-04-25 | 69 | 75% | 36.1d | start no earlier than 2017-04-18 |
| 76 |  | 保险营销活动 | 2d | 2017-05-08 | 2017-05-09 | 81 |  | 29.8d | start no earlier than 2017-04-21 |
| 77 | WBS-4.1.2.52 | **维修管理** | 24d | 2017-04-12 A | 2017-05-17 |  | 39% | 35.5d |  |
| 78 |  | 客户接待 | 7d | 2017-04-12 A | 2017-04-21 | 115 | 75% | 48.5d |  |
| 79 |  | 客户接待 | 7d | 2017-04-12 A | 2017-04-21 | 44 | 85% | 35.2d |  |
| 80 |  | 客户接待 | 7d | 2017-04-17 A | 2017-04-25 | 121 | 80% | 36.88d |  |
| 81 |  | 客户接待 | 7d | 2017-04-26 A | 2017-05-05 | 75 | 90% | 29.8d | start no earlier than 2017-04-17 |
| 82 |  | 提交结算 | 4d | 2017-04-21 | 2017-04-27 | 78 |  | 48.5d |  |
| 83 |  | 修理估价 | 6d | 2017-04-21 | 2017-05-02 | 79 |  | 35.2d | start no earlier than 2017-04-21 |
| 84 |  | 维修业务查询 | 3d | 2017-04-26 | 2017-04-28 | 80 |  | 36.88d |  |
| 85 |  | 维修组合管理 | 4d | 2017-05-02 | 2017-05-05 | 84 |  | 36.88d |  |
| 86 |  | 维修项目管理 | 5d | 2017-05-08 | 2017-05-12 | 85 |  | 36.88d |  |
| 87 |  | 保养套餐管理 | 2d | 2017-04-27 A | 2017-05-02 A | 82 | 100% |  |  |
| 88 |  | 交车 | 5d | 2017-05-02 | 2017-05-09 | 87 |  | 34.1d |  |
| 89 |  | 未结算索赔工单查询 | 2d | 2017-05-09 A | 2017-05-11 A | 88 | 100% |  |  |
| 90 |  | 车间维修派工 | 6d | 2017-05-02 | 2017-05-10 | 83 |  | 35.2d |  |
| 91 |  | 车间工时调整 | 3d | 2017-05-10 | 2017-05-15 | 90 |  | 35.2d |  |
| 92 |  | 车间消息日志 | 2d | 2017-05-15 | 2017-05-17 | 91 |  | 35.2d |  |
| 93 | WBS-4.1.2.66 | **配件管理** | 40.5d | 2017-03-27 A | 2017-05-24 |  | 67% | 30.5d |  |
| 94 |  | 呆滞品数据上报 | 2d | 2017-05-17 A | 2017-05-18 A | 38 | 100% |  | finish no earlier than 2017-05-18 |
| 95 |  | 已发布呆滞品查询 | 1d | 2017-05-19 A | 2017-05-19 A | 94 | 100% |  | finish no earlier than 2017-04-27 |
| 96 |  | 配件信息管理 | 3.5d | 2017-03-27 A | 2017-03-30 A | 28 | 100% |  |  |
| 97 |  | 配件库存管理 | 4d | 2017-03-30 A | 2017-04-06 A | 96 | 100% |  |  |
| 98 |  | 配件价格调整 | 2.5d | 2017-04-06 A | 2017-04-10 A | 97 | 100% |  |  |
| 99 |  | 配件成本价调整 | 2d | 2017-04-11 A | 2017-04-12 A | 98 | 100% |  |  |
| 100 |  | 配件ABCD分析 | 2d | 2017-04-13 A | 2017-04-14 A | 99 | 100% |  |  |
| 101 |  | 维修领料 | 3.5d | 2017-03-30 A | 2017-04-05 A | 49 | 100% |  |  |
| 102 |  | 配件销售报价 | 3.5d | 2017-04-06 A | 2017-04-11 | 101 | 95% | 43.8d |  |
| 103 |  | 配件销售 | 4.5d | 2017-04-11 A | 2017-04-17 | 102 | 40% | 42d |  |
| 104 |  | 车间借料 | 4d | 2017-04-25 A | 2017-04-28 A | 156 | 100% |  |  |
| 105 |  | 内部领用 | 3d | 2017-04-18 | 2017-04-20 | 103 |  | 42d |  |
| 106 |  | 调拨出库 | 3d | 2017-04-21 A | 2017-04-25 | 105 | 20% | 42d |  |
| 107 |  | 借出登记 | 2.5d | 2017-04-18 A | 2017-04-20 | 50 | 95% | 51.46d |  |
| 108 |  | 借进归还 | 2.5d | 2017-04-20 A | 2017-04-24 | 107 | 40% | 50.96d |  |
| 109 |  | 配件移库 | 2.5d | 2017-04-27 A | 2017-05-02 A | 243 | 100% |  | start no earlier than 2017-04-27 |
| 110 |  | 配件报损 | 2.5d | 2017-05-02 A | 2017-05-04 | 109 | 35% | 44d |  |
| 111 |  | 配件预留 | 2.5d | 2017-04-17 A | 2017-04-19 A | 100 | 100% |  |  |
| 112 |  | 配件解预留 | 2d | 2017-04-19 A | 2017-04-21 A | 111 | 100% |  |  |
| 113 |  | 装饰装潢领料 | 2.5d | 2017-04-21 A | 2017-04-25 | 112 | 40% | 50d |  |
| 114 |  | 签收货运单 | 3d | 2017-03-31 A | 2017-04-05 | 39 | 90% | 56.47d |  |
| 115 |  | 采购入库 | 4.5d | 2017-04-06 A | 2017-04-12 | 114 | 65% | 53.54d |  |
| 116 |  | 调拨入库 | 3d | 2017-04-25 A | 2017-04-27 A | 138 | 100% |  | finish no earlier than 2017-04-27 |
| 117 |  | 借进登记 | 2.5d | 2017-05-15 A | 2017-05-17 A | 86 | 100% |  |  |
| 118 |  | 借出归还 | 2d | 2017-03-30 A | 2017-03-31 A | 45 | 100% |  |  |
| 119 |  | 配件报溢 | 2.5d | 2017-04-01 A | 2017-04-06 A | 118 | 100% |  |  |
| 120 |  | 盘点清单编辑 | 3.5d | 2017-04-06 A | 2017-04-11 | 119 | 90% | 43.84d |  |
| 121 |  | 盘点差异分析 | 3d | 2017-04-12 A | 2017-04-18 | 120 | 65% | 40.84d |  |
| 122 |  | 配件订货参数 | 1.5d | 2017-04-10 A | 2017-04-11 A |  | 100% |  | start no earlier than 2017-04-10 |
| 123 |  | 配件订货计划 | 5d | 2017-04-11 A | 2017-04-18 | 122 | 90% | 55.2d |  |
| 124 |  | 配件订货上报 | 3d | 2017-04-18 A | 2017-04-21 | 123 | 90% | 52.5d |  |
| 125 |  | 配件订单状态查询 | 2d | 2017-04-21 A | 2017-04-25 A | 124 | 100% |  |  |
| 126 |  | 订单状态跟踪查询 | 2d | 2017-04-25 A | 2017-04-27 | 125 | 20% | 48.5d |  |
| 127 |  | 发料价格调整 | 2.5d | 2017-04-27 A | 2017-05-02 A | 126 | 100% |  |  |
| 128 |  | 配件流水帐 | 2.5d | 2017-05-03 A | 2017-05-05 A | 127 | 100% |  |  |
| 129 |  | 配件缺料明细表 | 2.5d | 2017-04-26 A | 2017-04-28 A | 113 | 100% |  |  |
| 130 |  | 预约预留情况 | 2d | 2017-04-28 A | 2017-05-03 A | 129 | 100% |  |  |
| 131 |  | 预先拣料查询 | 2d | 2017-05-03 A | 2017-05-05 A | 130 | 100% |  |  |
| 132 |  | 三包预警缺料明细查询 | 2d | 2017-05-05 | 2017-05-09 | 128 |  | 37.5d |  |
| 133 |  | 应付帐款管理 | 3d | 2017-05-05 A | 2017-05-10 A | 131 | 100% |  |  |
| 134 |  | 货运签收单查询 | 2.5d | 2017-04-28 A | 2017-05-03 | 116 | 10% | 30.5d |  |
| 135 |  | 到货索赔管理 | 4d | 2017-05-09 | 2017-05-15 | 132 |  | 37.5d |  |
| 136 |  | 工具定义 | 2d | 2017-04-14 A | 2017-04-17 A | 34 | 100% |  | start no earlier than 2017-03-23 |
| 137 |  | 采购入库 | 2.5d | 2017-04-18 A | 2017-04-20 | 136 | 75% | 50.5d | start no earlier than 2017-03-24 |
| 138 |  | 借用登记 | 3d | 2017-04-20 | 2017-04-25 | 137 |  | 50.5d | start no earlier than 2017-03-27 |
| 139 |  | 借用归还 | 2d | 2017-05-03 | 2017-05-05 | 134 |  | 30.5d | start no earlier than 2017-03-27 |
| 140 |  | 借用报失 | 2d | 2017-05-05 | 2017-05-09 | 139 |  | 30.5d | start no earlier than 2017-03-28 |

| ID | WBS | Task | Duration | Start | Finish | Predecessors | Complete | Total float | Constraint |
| --- | --- | --- | --- | --- | --- | --- | --- | --- | --- |
| 141 |  | 库存报废 | 2.5d | 2017-05-09 | 2017-05-11 | 140 |  | 30.5d | start no earlier than 2017-03-28 |
| 142 |  | 工具流水帐 | 2.5d | 2017-05-12 | 2017-05-16 | 141 |  | 30.5d | start no earlier than 2017-03-29 |
| 143 |  | 单据查询 | 2d | 2017-05-16 | 2017-05-18 | 142 |  | 30.5d | start no earlier than 2017-03-30 |
| 144 |  | 工具进销存统计 | 2d | 2017-05-18 | 2017-05-22 | 143 |  | 30.5d | start no earlier than 2017-03-31 |
| 145 |  | 借用情况统计 | 2d | 2017-05-22 | 2017-05-24 | 144 |  | 30.5d | start no earlier than 2017-04-01 |
| 146 | WBS-4.1.2.140 | **结算管理** | 24d | 2017-04-17 A | 2017-05-19 |  | 37% | 33d |  |
| 147 |  | 费用结算 | 5d | 2017-04-17 A | 2017-04-24 |  | 85% | 36.8d | start no earlier than 2017-04-17 |
| 148 |  | 收款作业 | 3.5d | 2017-04-25 | 2017-04-28 | 147 |  | 36.8d |  |
| 149 |  | 取消结算 | 2.5d | 2017-04-28 | 2017-05-03 | 148 |  | 36.8d |  |
| 150 |  | 预收款管理 | 4d | 2017-05-04 A | 2017-05-09 | 149 | 95% | 33d |  |
| 151 |  | 结算关单 | 4d | 2017-05-10 | 2017-05-15 | 150 |  | 33d |  |
| 152 |  | 财务应付账款管理 | 4d | 2017-05-16 | 2017-05-19 | 151 |  | 33d |  |
| 153 |  | 整车应付账款管理（X） | 3d | 2017-05-02 A | 2017-05-04 | 104 | 50% | 29.5d |  |
| 154 | WBS-4.1.2.149 | **市场活动** | 6d | 2017-04-19 A | 2017-04-26 |  | 63% | 49d |  |
| 155 |  | 服务活动管理 | 4d | 2017-04-19 A | 2017-04-24 |  | 45% | 50.96d | finish no earlier than 2017-04-24 |
| 156 |  | 参与活动车辆查询 | 2d | 2017-04-25 A | 2017-04-26 | 155 | 98% | 49d |  |
| 157 | 1.1.1.8 | **会员管理** | 37.5d | 2017-04-12 | 2017-06-06 |  |  | 22.5d |  |
| 158 |  | 会员申请 | 2d | 2017-04-12 | 2017-04-13 |  |  | 28d | start no earlier than 2017-04-12 |
| 159 |  | 会员卡信息维护 | 4.5d | 2017-04-14 | 2017-04-20 | 158 |  | 28d |  |
| 160 |  | 会员卡信息查询 | 2d | 2017-04-20 | 2017-04-24 | 159 |  | 28d |  |
| 161 |  | 积分明细查询 | 2d | 2017-04-24 | 2017-04-26 | 160 |  | 28d |  |
| 162 |  | 积分明细调整 | 2d | 2017-04-26 | 2017-04-28 | 161 |  | 28d |  |
| 163 |  | 会员储值明细查询 | 2d | 2017-04-28 | 2017-05-03 | 162 |  | 28d |  |
| 164 |  | 积分转让 | 3d | 2017-05-03 | 2017-05-08 | 163 |  | 28d |  |
| 165 |  | 积分兑换礼品 | 2.5d | 2017-05-08 | 2017-05-10 | 164 |  | 28d |  |
| 166 |  | 积分兑换礼品查询 | 2d | 2017-05-11 | 2017-05-12 | 165 |  | 28d |  |
| 167 |  | 积分排行 | 1.5d | 2017-05-15 | 2017-05-16 | 166 |  | 28d |  |
| 168 |  | 会员卡服务项目定义 | 1.5d | 2017-05-16 | 2017-05-17 | 167 |  | 28d |  |
| 169 |  | 会员卡流水记录 | 4d | 2017-05-26 | 2017-06-02 | 327 |  | 13.5d |  |
| 170 |  | 会员级别调整 | 2d | 2017-06-02 | 2017-06-06 | 169 |  | 13.5d |  |
| 171 | WBS-4.1.2.161 | **报表管理** | 33d | 2017-05-22 | 2017-07-06 |  |  | 0d |  |
| 172 |  | 当月进厂客户微信绑定率报表 | 3d | 2017-05-22 | 2017-05-24 |  |  | 0d | start no earlier than 2017-05-22 |
| 173 |  | 维修业务成本查询 | 3d | 2017-05-25 | 2017-05-27 | 172 |  | 0d | start no earlier than 2017-05-22 |
| 174 |  | 车主车辆资料查询 | 3d | 2017-05-31 | 2017-06-02 | 173 |  | 0d | start no earlier than 2017-05-23 |
| 175 |  | 进厂车辆日报 | 3d | 2017-06-05 | 2017-06-07 | 174 |  | 0d | start no earlier than 2017-05-23 |
| 176 |  | 进厂车辆月报 | 3d | 2017-06-08 | 2017-06-12 | 175 |  | 0d | start no earlier than 2017-05-24 |
| 177 |  | 维修项目统计 | 3d | 2017-06-13 | 2017-06-15 | 176 |  | 0d | start no earlier than 2017-05-24 |
| 178 |  | 车辆统计报表 | 3d | 2017-06-16 | 2017-06-20 | 177 |  | 0d | start no earlier than 2017-05-25 |
| 179 |  | 技师维修台次统计 | 3d | 2017-06-21 | 2017-06-23 | 178 |  | 0d | start no earlier than 2017-05-25 |
| 180 |  | 常用维修项目统计 | 3d | 2017-06-26 | 2017-06-28 | 179 |  | 0d | start no earlier than 2017-05-26 |
| 181 |  | 配件库存明细查询 | 3d | 2017-06-29 | 2017-07-03 | 180 |  | 0d | start no earlier than 2017-05-26 |
| 182 |  | 配件销售价格查询 | 3d | 2017-05-22 | 2017-05-24 |  |  | 0d | start no earlier than 2017-05-22 |
| 183 |  | 采购入库统计 | 3d | 2017-05-25 | 2017-05-27 | 182 |  | 0d | start no earlier than 2017-05-25 |
| 184 |  | 维修发料统计 | 3d | 2017-05-31 | 2017-06-02 | 183 |  | 0d | start no earlier than 2017-05-31 |
| 185 |  | 配件销售统计 | 3d | 2017-06-05 | 2017-06-07 | 184 |  | 0d | start no earlier than 2017-05-31 |
| 186 |  | 车间借料统计 | 3d | 2017-06-08 | 2017-06-12 | 185 |  | 0d | start no earlier than 2017-06-01 |
| 187 |  | 内部领用统计 | 3d | 2017-06-13 | 2017-06-15 | 186 |  | 0d | start no earlier than 2017-06-01 |
| 188 |  | 借用情况统计 | 3d | 2017-06-16 | 2017-06-20 | 187 |  | 0d | start no earlier than 2017-06-02 |
| 189 |  | 配件移库统计 | 3d | 2017-06-21 | 2017-06-23 | 188 |  | 0d | start no earlier than 2017-06-02 |
| 190 |  | 报溢报损统计 | 3d | 2017-06-26 | 2017-06-28 | 189 |  | 0d | start no earlier than 2017-06-05 |
| 191 |  | 出入库单据查询 | 3d | 2017-06-29 | 2017-07-03 | 190 |  | 0d | start no earlier than 2017-06-05 |
| 192 |  | 配件进销存明细 | 3d | 2017-05-22 | 2017-05-24 |  |  | 0d | start no earlier than 2017-05-22 |
| 193 |  | 配件进销存汇总 | 3d | 2017-05-25 | 2017-05-27 | 192 |  | 0d | start no earlier than 2017-05-25 |
| 194 |  | 装饰装潢发料统计 | 3d | 2017-05-31 | 2017-06-02 | 193 |  | 0d | start no earlier than 2017-05-31 |
| 195 |  | 配件月报表 | 3d | 2017-06-05 | 2017-06-07 | 194 |  | 0d | start no earlier than 2017-06-05 |
| 196 |  | 配件出库排名 | 3d | 2017-06-08 | 2017-06-12 | 195 |  | 0d | start no earlier than 2017-06-08 |
| 197 |  | 配件采购登记台帐 | 3d | 2017-06-13 | 2017-06-15 | 196 |  | 0d | start no earlier than 2017-06-08 |
| 198 |  | 盘点查询 | 3d | 2017-06-16 | 2017-06-20 | 197 |  | 0d | start no earlier than 2017-06-09 |
| 199 |  | 配件预留查询 | 3d | 2017-06-21 | 2017-06-23 | 198 |  | 0d | start no earlier than 2017-06-09 |
| 200 |  | 配件基本信息查询 | 3d | 2017-06-26 | 2017-06-28 | 199 |  | 0d | start no earlier than 2017-06-12 |
| 201 |  | 配件库龄查询 | 3d | 2017-06-29 | 2017-07-03 | 200 |  | 0d | start no earlier than 2017-06-12 |
| 202 |  | 配件满足率 | 3d | 2017-05-22 | 2017-05-24 |  |  | 0d | start no earlier than 2017-05-22 |
| 203 |  | 工单满足率 | 3d | 2017-05-25 | 2017-05-27 | 202 |  | 0d | start no earlier than 2017-05-25 |
| 204 |  | 收款情况查询 | 3d | 2017-05-31 | 2017-06-02 | 203 |  | 0d | start no earlier than 2017-05-31 |
| 205 |  | 欠帐信息查询 | 3d | 2017-06-05 | 2017-06-07 | 204 |  | 0d | start no earlier than 2017-06-05 |
| 206 |  | 优惠情况查询 | 3d | 2017-06-08 | 2017-06-12 | 205 |  | 0d | start no earlier than 2017-06-08 |
| 207 |  | 减免情况查询 | 3d | 2017-06-13 | 2017-06-15 | 206 |  | 0d | start no earlier than 2017-06-13 |
| 208 |  | 去零情况查询 | 3d | 2017-06-16 | 2017-06-20 | 207 |  | 0d | start no earlier than 2017-06-16 |
| 209 |  | 单车成本查询 | 3d | 2017-06-21 | 2017-06-23 | 208 |  | 0d | start no earlier than 2017-06-16 |
| 210 |  | 结算单明细查询 | 3d | 2017-06-26 | 2017-06-28 | 209 |  | 0d | start no earlier than 2017-06-19 |

| ID | WBS | Task | Duration | Start | Finish | Predecessors | Complete | Total float | Constraint |
| --- | --- | --- | --- | --- | --- | --- | --- | --- | --- |
| 211 |  | 收费对象情况查询 | 3d | 2017-06-29 | 2017-07-03 | 210 |  | 0d | start no earlier than 2017-06-19 |
| 212 |  | 营业额统计报表查询 | 3d | 2017-05-22 | 2017-05-24 |  |  | 6d | start no earlier than 2017-05-22 |
| 213 |  | 售后产值统计 | 3d | 2017-05-25 | 2017-05-27 | 212 |  | 6d | start no earlier than 2017-05-25 |
| 214 |  | 结算单维修项目统计 | 3d | 2017-05-31 | 2017-06-02 | 213 |  | 6d | start no earlier than 2017-05-31 |
| 215 |  | 预收款查询 | 3d | 2017-06-05 | 2017-06-07 | 214 |  | 6d | start no earlier than 2017-06-05 |
| 216 |  | 财务数据上报 | 3d | 2017-06-08 | 2017-06-12 | 215 |  | 6d | start no earlier than 2017-06-08 |
| 217 |  | 礼券使用统计报表 | 3d | 2017-06-16 | 2017-06-20 | 216 |  | 3d | start no earlier than 2017-06-16 |
| 218 |  | 技师工时统计表 | 3d | 2017-06-21 | 2017-06-23 | 217 |  | 3d | start no earlier than 2017-06-21 |
| 219 |  | 客户经理绩效统计表 | 3d | 2017-06-26 | 2017-06-28 | 218 |  | 3d | start no earlier than 2017-06-26 |
| 220 |  | 技师领料统计 | 3d | 2017-06-29 | 2017-07-03 | 219 |  | 3d | start no earlier than 2017-06-29 |
| 221 |  | 装潢派工技师绩效统计表 | 3d | 2017-05-22 | 2017-05-24 |  |  | 30d | start no earlier than 2017-05-22 |
| 222 |  | 市场活动统计表 | 3d | 2017-06-16 | 2017-06-20 |  |  | 6d | start no earlier than 2017-06-16 |
| 223 |  | 经营综合日报表 | 3d | 2017-06-26 | 2017-06-28 | 222 |  | 3d | start no earlier than 2017-06-26 |
| 224 |  | 经营综合日报表 | 3d | 2017-06-29 | 2017-07-03 | 223 |  | 3d | start no earlier than 2017-06-29 |
| 225 |  | 车主预约响应及时率日报 | 3d | 2017-07-04 | 2017-07-06 | 181 |  | 0d | start no earlier than 2017-06-13 |
| 226 |  | 手工填写 | 3d | 2017-07-04 | 2017-07-06 | 191 |  | 0d | start no earlier than 2017-06-14 |
| 227 |  | 经营月报表 | 3d | 2017-07-04 | 2017-07-06 | 201 |  | 0d | start no earlier than 2017-06-15 |
| 228 |  | 吸收率月报表 | 3d | 2017-07-04 | 2017-07-06 | 211 |  | 0d | start no earlier than 2017-06-15 |
| 229 | WBS-4.1.2.160 | **接口开发** | 29.25d? | 2017-04-06 A | 2017-05-18 |  | 41% | 34.75d |  |
| 230 |  | CLDMS005 配件基本信息下发 | 0.5d | 2017-04-18 A | 2017-04-18 A |  | 100% |  | start no earlier than 2017-04-18 |
| 231 |  | CLDMS006 工时数据下发 | 0.5d | 2017-04-18 A | 2017-04-18 A | 230 | 100% |  |  |
| 232 |  | CLDMS007 OEM下发优惠模式 | 0.5d | 2017-04-19 A | 2017-04-19 A | 231 | 100% |  |  |
| 233 |  | CLDMS008 保养套餐下发 | 0.5d | 2017-04-19 A | 2017-04-19 A | 232 | 100% |  |  |
| 234 |  | SEDMS005 服务活动下发 | 0.5d | 2017-04-20 A | 2017-04-20 A | 233 | 100% |  |  |
| 235 |  | CLDMS010 工时单价下发 | 0.5d | 2017-04-20 A | 2017-04-20 A | 234 | 100% |  |  |
| 236 |  | CLDMS011 附加项目下发 | 0.5d | 2017-04-21 A | 2017-04-21 A | 235 | 100% |  |  |
| 237 |  | SADMS012 计划任务上报超过48小时未结算的索赔工单 | 0.5d | 2017-04-21 A | 2017-04-21 A | 236 | 100% |  |  |
| 238 |  | SADMS019 将符合条件的客户经理上传至微信平台 | 0.5d | 2017-04-24 A | 2017-04-24 A | 237 | 100% |  |  |
| 239 |  | SADMS020 微信车主信息下发 | 0.5d | 2017-04-24 A | 2017-04-24 A | 238 | 100% |  |  |
| 240 |  | SADMS021 一对一客户经理绑定修改下发 | 0.5d | 2017-04-25 A | 2017-04-25 A | 239 | 100% |  |  |
| 241 |  | SADMS051 经营月报表上报 | 0.5d | 2017-04-25 A | 2017-04-25 A | 240 | 100% |  |  |
| 242 |  | SADMS052 吸收率报表上报 | 0.5d | 2017-04-26 A | 2017-04-26 A | 241 | 100% |  |  |
| 243 |  | SEDMS001 上传车主关键信息变更历史 | 0.5d | 2017-04-26 A | 2017-04-26 A | 242 | 100% |  |  |
| 244 |  | SEDMS002 上传车牌 变更信息 | 0.5d | 2017-04-27 A | 2017-04-27 A | 110 | 100% |  |  |
| 245 |  | SEDMS004 车主车辆新增车辆同步获取厂端数据 | 0.5d | 2017-04-27 | 2017-04-27 | 244 |  | 48d |  |
| 246 |  | SEDMS005 下发服务活动 | 0.5d | 2017-04-28 A | 2017-04-28 A | 245 | 100% |  |  |
| 247 |  | SEDMS006 下发配件货运单信息 | 0.5d | 2017-04-28 A | 2017-04-28 A | 246 | 100% |  |  |
| 248 |  | SEDMS007 经销商上报车辆维修信息（维修结算上报） | 0.5d | 2017-05-02 A | 2017-05-02 A | 247 | 100% |  |  |
| 249 |  | SEDMS008 经销商库存信息上报 | 0.5d | 2017-05-02 A | 2017-05-02 A | 248 | 100% |  |  |
| 250 |  | SEDMS009 服务活动完成情况下发 | 0.5d | 2017-05-03 A | 2017-05-03 A | 249 | 100% |  |  |
| 251 |  | SEDMS010 上报三包维修方案 | 0.5d | 2017-05-03 A | 2017-05-03 A | 250 | 100% |  | start no earlier than 2017-04-06 |
| 252 |  | SEDMS011 三包状态下发 | 0.25d | 2017-05-04 A | 2017-05-04 A | 251 | 100% |  |  |
| 253 |  | SEDMS012 经销商上报未结算的索赔工单 | 0.25d | 2017-05-04 A | 2017-05-04 A | 252 | 100% |  |  |
| 254 |  | SEDMS013 经销商上报未结算的索赔工单的变更删除业务上报 | 0.25d | 2017-05-04 A | 2017-05-04 A | 253 | 100% |  |  |
| 255 |  | SEDMS016 将符合条件的客户经理上传至微信平台 | 0.25d | 2017-05-04 A | 2017-05-04 A | 254 | 100% |  |  |
| 256 |  | CLDMS018 接收保养套餐主数据 | 0.25d | 2017-05-05 A | 2017-05-05 A | 255 | 100% |  |  |
| 257 |  | SADMS099 保养套餐修改上报接口 | 0.25d | 2017-05-05 A | 2017-05-05 A | 256 | 100% |  |  |
| 258 |  | SADMS111 限价车系及维修类型数据下发接口 | 0.25d | 2017-05-05 A | 2017-05-05 A | 257 | 100% |  |  |
| 259 |  | SADMS112 计划任务每日上报未结算的工单接口 | 0.25d | 2017-05-05 A | 2017-05-05 A | 258 | 100% |  |  |
| 260 |  | SADMS113 未结算的工单作废上报接口 | 0.25d | 2017-05-08 A | 2017-05-08 A | 259 | 100% |  |  |
| 261 |  | SADMS061 一对一客户经理绑定 | 0.25d | 2017-05-08 A | 2017-05-08 A | 260 | 100% |  |  |
| 262 |  | CLDMS013 接收微信绑定信息 | 0.25d | 2017-05-08 A | 2017-05-08 A | 261 | 100% |  |  |
| 263 |  | CLDMS014 修改微信首要联系方式 | 0.25d | 2017-05-08 A | 2017-05-08 A | 262 | 100% |  |  |
| 264 |  | CLDMS015 微信解绑 | 0.25d | 2017-05-09 A | 2017-05-09 A | 263 | 100% |  |  |
| 265 |  | SADMS026 计划任务统计配件入库来源监控报表并上报总部 | 0.25d | 2017-05-09 | 2017-05-09 | 264 |  | 34.75d |  |
| 266 |  | SADMS027 配件采购入库、调拨入库、报溢入库 入账后上报总部入库单明细信息 | 0.25d | 2017-05-09 | 2017-05-09 | 265 |  | 34.75d |  |
| 267 |  | SADMS058 固化进展车辆微信绑定状况并上报 | 0.25d | 2017-05-09 | 2017-05-09 | 266 |  | 34.75d |  |
| 268 |  | SADMS059 保险公司信息下发 | 0.25d | 2017-05-10 | 2017-05-10 | 267 |  | 34.75d |  |
| 269 |  | SADMS060 险种信息下发 | 0.25d | 2017-05-10 | 2017-05-10 | 268 |  | 34.75d |  |
| 270 |  | SADMS062 将已完成采购的三包预警缺料的配件缺料信息进行上报 | 0.25d | 2017-05-10 | 2017-05-10 | 269 |  | 34.75d |  |
| 271 |  | SADMS087 计划任务WebService上报过期车主微信预约接口 | 0.25d | 2017-05-10 | 2017-05-10 | 270 |  | 34.75d |  |
| 272 |  | SADMS088 上报微信预约信息接口 | 0.25d | 2017-05-11 | 2017-05-11 | 271 |  | 34.75d | start no earlier than 2017-04-06 |
| 273 |  | SADMS094 销售限价信息上报 | 0.25d | 2017-05-11 | 2017-05-11 | 272 |  | 34.75d |  |
| 274 |  | SEDMS023 维修工单处跨店维修的车辆根据VIN同步获取总部车主车辆信息 | 0.25d | 2017-05-11 | 2017-05-11 | 273 |  | 34.75d |  |
| 275 |  | SEDMS055 服务活动完成情况下发 | 0.25d | 2017-05-11 | 2017-05-11 | 274 |  | 34.75d |  |
| 276 |  | SEDMS056 上报投保单信息 | 0.25d | 2017-05-12 | 2017-05-12 | 275 |  | 34.75d |  |
| 277 |  | SEDMS058 文档电子化上报订单信息 | 0.25d | 2017-05-12 | 2017-05-12 | 276 |  | 34.75d |  |
| 278 |  | SEDMS059 上报续保战败信息 | 0.25d | 2017-05-12 | 2017-05-12 | 277 |  | 34.75d |  |
| 279 |  | SEDMSP03 上报菲亚特配件订货计划 | 0.25d | 2017-05-12 | 2017-05-12 | 278 |  | 34.75d |  |
| 280 |  | SEDMSP17 菲亚特配件订货审核结果接收 | 0.25d | 2017-05-15 | 2017-05-15 | 279 |  | 34.75d |  |

| ID | WBS | Task | Duration | Start | Finish | Predecessors | Total float | Constraint |
| --- | --- | --- | --- | --- | --- | --- | --- | --- |
| 281 |  | SEDMSP6 菲亚特配件货运单下发接口 | 0.25d | 2017-05-15 | 2017-05-15 | 280 | 34.75d |  |
| 282 |  | SEDMSP14 菲亚特配件货运单回执 | 0.25d | 2017-05-15 | 2017-05-15 | 281 | 34.75d |  |
| 283 |  | SEDCSP15 索赔单上报 | 0.25d | 2017-05-15 | 2017-05-15 | 282 | 34.75d |  |
| 284 |  | SEDMSP16 索赔单状态审核结果接收 | 0.25d | 2017-05-16 | 2017-05-16 | 283 | 34.75d |  |
| 285 |  | SADMS065 直销车车主车辆信息下发 | 0.25d | 2017-05-16 | 2017-05-16 | 284 | 34.75d |  |
| 286 |  | SEDCS015 维修工时接收接口 | 0.25d | 2017-05-16 | 2017-05-16 | 285 | 34.75d |  |
| 287 |  | SEDCS016 行管经销商接收接口 | 0.25d | 2017-05-16 | 2017-05-16 | 286 | 34.75d |  |
| 288 |  | SEDCS017 维修工时分类参数接收 | 0.25d | 2017-05-17 | 2017-05-17 | 287 | 34.75d |  |
| 289 |  | SADCS073 车主信息上报接口 | 0.25d | 2017-05-17 | 2017-05-17 | 288 | 34.75d |  |
| 290 |  | SEDMS072 车主信息更新下发接口 | 0.25d | 2017-05-17 | 2017-05-17 | 289 | 34.75d |  |
| 291 |  | SEDMS074 开票日期更新信息下发接口 | 0.25d | 2017-05-17 | 2017-05-17 | 290 | 34.75d |  |
| 292 |  | SEDMS075 保险营销活动卡券下发接口 | 0.25d | 2017-05-18 | 2017-05-18 | 291 | 34.75d |  |
| 293 |  | SEDMS019 售后召回活动接口 | 0.5d | 2017-04-06 | 2017-04-06 |  | 51.5d | start no earlier than 2017-04-06 |
| 294 |  | SEDMS076 GCS导入车辆接收接口 | 0.5d | 2017-04-06 | 2017-04-06 | 293 | 51.5d |  |
| 295 |  | SEDMS020 召回活动取消发布接收接口 | 0.5d | 2017-04-07 | 2017-04-07 | 294 | 51.5d |  |
| 296 |  | SEDCS019 业务往来客户接收接口 | 0.5d | 2017-04-07 | 2017-04-07 | 295 | 51.5d |  |
| 297 |  | SEPA02 在线调拨出库单上报接口 | 0.5d | 2017-04-10 | 2017-04-10 | 296 | 51.5d |  |
| 298 |  | SEPA04 在线调拨入库单上报接口 | 0.5d | 2017-04-10 | 2017-04-10 | 297 | 51.5d |  |
| 299 |  | SEDCS018 在线调拨入库单下发接口 | 0.5d | 2017-04-11 | 2017-04-11 | 298 | 51.5d |  |
| 300 |  | 配件限价接口webservice | 3d | 2017-04-11 | 2017-04-14 | 299 | 51.5d |  |
| 301 |  | 提交结算限价车系校验接口 | 3d | 2017-04-14 | 2017-04-19 | 300 | 51.5d |  |
| 302 |  | 校验参加唯一性活动是否多次接口 | 3d? | 2017-04-19 | 2017-04-24 | 301 | 51.5d |  |
| 303 | WBS-4.1.2.162 | **计划任务** | 31.5d | 2017-04-12 | 2017-05-26 |  | 28.5d |  |
| 304 |  | GEN_DAILY_REPORT 执行日结 | 2d | 2017-05-11 | 2017-05-15 | 89 | 33.5d | start no earlier than 2017-04-12 |
| 305 |  | SEDMS001 上传车主关键信息变更历史 | 2d | 2017-05-15 | 2017-05-17 | 304 | 33.5d |  |
| 306 |  | SEDMS002 车牌更改信息上报 | 2d | 2017-05-17 | 2017-05-19 | 305 | 33.5d |  |
| 307 |  | SEDMS008 配件库存报表上报 | 2d | 2017-04-26 | 2017-04-27 | 106 | 42d |  |
| 308 |  | MAINTAIN_TECHNICIA_I 计划任务跑技师 | 2d | 2017-04-28 | 2017-05-02 | 307 | 42d |  |
| 309 |  | MAINTAIN_OUT_PUT_STATICS 计划任务产值报表 | 2d | 2017-05-03 | 2017-05-04 | 308 | 42d |  |
| 310 |  | DELETE_PART_BOLIGATED 配件解预留 | 2d | 2017-05-05 | 2017-05-08 | 309 | 42d |  |
| 311 |  | COMPUTE_STOCK_MIN_QUANTITY 配件安全库存计算 | 2d | 2017-04-12 | 2017-04-13 |  | 34d | start no earlier than 2017-04-12 |
| 312 |  | SADMS026 计划任务上报统计配件入库来源监控报表 | 2d | 2017-04-14 | 2017-04-17 | 311 | 34d |  |
| 313 |  | MAINTAIN_BUSINESS_CHRYSLER_MONTHLY 计划任务上报统计配件入库来源监控报表 | 2d | 2017-04-18 | 2017-04-19 | 312 | 34d |  |
| 314 |  | SADMS051 计划任务上报克莱斯勒经营月报 | 2d | 2017-04-20 | 2017-04-21 | 313 | 34d | start no earlier than 2017-04-06 |
| 315 |  | MAINTAIN_ABSORB_RATE_CHRYSLER 计划任务生成克莱斯勒吸收率报表 | 2d | 2017-04-24 | 2017-04-25 | 314 | 34d |  |
| 316 |  | SADMS052 计划任务上报克莱斯勒吸收率报表 | 2d | 2017-04-26 | 2017-04-27 | 315 | 34d |  |
| 317 |  | SEDMS059 计划任务每天上报续保战败信息 | 2d | 2017-04-28 | 2017-05-02 | 316 | 34d | start no earlier than 2017-04-12 |
| 318 |  | SADMS012 计划任务每天上报续保战败信息 | 2d | 2017-05-03 | 2017-05-04 | 317 | 34d |  |
| 319 |  | SADMS087 计划任务过期车主微信预约上报 | 2d | 2017-05-05 | 2017-05-08 | 318 | 34d |  |
| 320 |  | SADMS056 计划任务上报试乘试驾统计报表（月报） | 2d | 2017-05-09 | 2017-05-10 | 319 | 34d |  |
| 321 |  | SADMS057 计划任务上报试乘试驾统计报表（周报） | 2d | 2017-05-11 | 2017-05-12 | 320 | 34d |  |
| 322 |  | SADMS058 当月进厂客户微信绑定率报表固话和上报 | 2d | 2017-05-15 | 2017-05-16 | 321 | 34d |  |
| 323 |  | SADMS088 每天微信主数据上报 | 2d | 2017-05-17 | 2017-05-18 | 322 | 34d |  |
| 324 |  | SADMS094 每天微信主数据上报 | 2d | 2017-05-16 | 2017-05-18 | 62 | 13.5d |  |
| 325 |  | ADD_DAILY_PART_STOCK 每天微信主数据上报 | 2d | 2017-05-18 | 2017-05-22 | 324 | 13.5d |  |
| 326 |  | SADMS062 每天将已完成采购的三包预警缺料的配件的缺料信息进行上报 | 2d | 2017-05-22 | 2017-05-24 | 325 | 13.5d |  |
| 327 |  | SADMS112 计划任务每日上报未结算的工单信息 | 2d | 2017-05-24 | 2017-05-26 | 326 | 13.5d |  |
| 328 | WBS-4.1.2.163 | **集成页面** | 8d | 2017-05-10 A | 2017-05-19 |  | 33d |  |
| 329 | WBS-4.1.2.163.59 | **系统管理** | 1d | 2017-05-10 A | 2017-05-10 |  | 40d |  |
| 330 |  | 个人信息维护 | 1d | 2017-05-10 A | 2017-05-10 |  | 40d |  |
| 331 |  | 关键岗位人员变更申请 | 1d | 2017-05-10 A | 2017-05-10 |  | 40d | finish no earlier than 2017-05-10 |
| 332 |  | 关键岗位人员信息查询 | 1d | 2017-05-10 A | 2017-05-10 |  | 40d | finish no earlier than 2017-05-10 |
| 333 |  | 关键岗位人员信息历史查询 | 1d | 2017-05-10 A | 2017-05-10 |  | 40d | finish no earlier than 2017-05-10 |
| 334 |  | 经销商基本信息查询 | 1d | 2017-05-10 A | 2017-05-10 |  | 40d |  |
| 335 | WBS-4.1.2.163.60 | **客户管理** | 1d | 2017-05-11 | 2017-05-11 |  | 39d |  |
| 336 |  | 微信预约时段空闲度设定 | 1d | 2017-05-11 | 2017-05-11 |  | 39d | start no earlier than 2017-05-11 |
| 337 |  | 微信预约专员维护 | 1d | 2017-05-11 | 2017-05-11 |  | 39d | start no earlier than 2017-05-11 |
| 338 |  | 回访任务处理 | 1d | 2017-05-11 | 2017-05-11 |  | 39d | start no earlier than 2017-05-11 |
| 339 |  | 客户（总部）投诉处理 | 1d | 2017-05-11 | 2017-05-11 |  | 39d | start no earlier than 2017-05-11 |
| 340 |  | 客户投诉查询 | 1d | 2017-05-11 | 2017-05-11 |  | 39d | start no earlier than 2017-05-11 |
| 341 |  | 大客户政策查询 | 1d | 2017-05-11 | 2017-05-11 |  | 39d | start no earlier than 2017-05-11 |
| 342 |  | 大客户周报查询 | 1d | 2017-05-11 | 2017-05-11 |  | 39d | start no earlier than 2017-05-11 |
| 343 | WBS-4.1.2.163.61 | **整车管理** | 3d | 2017-05-12 | 2017-05-16 |  | 36d |  |
| 344 |  | 年度目标查询 | 1d | 2017-05-12 | 2017-05-12 |  | 38d | start no earlier than 2017-05-12 |
| 345 |  | 月度任务查询 | 1d | 2017-05-12 | 2017-05-12 |  | 38d | start no earlier than 2017-05-12 |
| 346 |  | 生产期货预定录入 | 1d | 2017-05-12 | 2017-05-12 |  | 38d | start no earlier than 2017-05-12 |
| 347 |  | 生产期货预定查询 | 1d | 2017-05-12 | 2017-05-12 |  | 38d | start no earlier than 2017-05-12 |
| 348 |  | 生产需求任务录入 | 1d | 2017-05-12 | 2017-05-12 |  | 38d | start no earlier than 2017-05-12 |
| 349 |  | 生产订单确认上报 | 1d | 2017-05-12 | 2017-05-12 |  | 38d | start no earlier than 2017-05-12 |
| 350 |  | 生产需求序列号跟踪(DLR) | 1d | 2017-05-12 | 2017-05-12 |  | 38d | start no earlier than 2017-05-12 |

| ID | WBS | Task | Duration | Start | Finish | Predecessors | Total float | Constraint |
| --- | --- | --- | --- | --- | --- | --- | --- | --- |
| 351 |  | 现货车辆预定 | 1d | 2017-05-12 | 2017-05-12 |  | 38d | start no earlier than 2017-05-12 |
| 352 |  | 期货车辆预定 | 1d | 2017-05-12 | 2017-05-12 |  | 38d | start no earlier than 2017-05-12 |
| 353 |  | 期货订单确认 | 1d | 2017-05-12 | 2017-05-12 |  | 38d | start no earlier than 2017-05-12 |
| 354 |  | 销售订单查询 | 1d | 2017-05-15 | 2017-05-15 |  | 37d | start no earlier than 2017-05-15 |
| 355 |  | 批发计划录入 | 1d | 2017-05-15 | 2017-05-15 |  | 37d | start no earlier than 2017-05-15 |
| 356 |  | 批发计划查询 | 1d | 2017-05-15 | 2017-05-15 |  | 37d | start no earlier than 2017-05-15 |
| 357 |  | 车辆调出申请 | 1d | 2017-05-15 | 2017-05-15 |  | 37d | start no earlier than 2017-05-15 |
| 358 |  | 车辆调拨查询 | 1d | 2017-05-15 | 2017-05-15 |  | 37d | start no earlier than 2017-05-15 |
| 359 |  | 零售上报 | 1d | 2017-05-15 | 2017-05-15 |  | 37d | start no earlier than 2017-05-15 |
| 360 |  | 撤单申请 | 1d | 2017-05-15 | 2017-05-15 |  | 37d | start no earlier than 2017-05-15 |
| 361 |  | 撤单查询 | 1d | 2017-05-15 | 2017-05-15 |  | 37d | start no earlier than 2017-05-15 |
| 362 |  | 零售金融贴息提报 | 1d | 2017-05-15 | 2017-05-15 |  | 37d | start no earlier than 2017-05-15 |
| 363 |  | 返利核算汇总查询 | 1d | 2017-05-15 | 2017-05-15 |  | 37d | start no earlier than 2017-05-15 |
| 364 |  | 定金宝收益金额查询 | 1d | 2017-05-15 | 2017-05-15 |  | 37d | start no earlier than 2017-05-15 |
| 365 |  | 车辆验收查询 | 1d | 2017-05-16 | 2017-05-16 |  | 36d | start no earlier than 2017-05-16 |
| 366 |  | 整车订单查询 | 1d | 2017-05-16 | 2017-05-16 |  | 36d | start no earlier than 2017-05-16 |
| 367 |  | 库存查询 | 1d | 2017-05-16 | 2017-05-16 |  | 36d | start no earlier than 2017-05-16 |
| 368 |  | 直销车PDI检查 | 1d | 2017-05-16 | 2017-05-16 |  | 36d | start no earlier than 2017-05-16 |
| 369 |  | 直销车验收入库 | 1d | 2017-05-16 | 2017-05-16 |  | 36d | start no earlier than 2017-05-16 |
| 370 |  | 直销车交车出库 | 1d | 2017-05-16 | 2017-05-16 |  | 36d | start no earlier than 2017-05-16 |
| 371 |  | 直销车实销上报 | 1d | 2017-05-16 | 2017-05-16 |  | 36d | start no earlier than 2017-05-16 |
| 372 | WBS-4.1.2.163.62 | **维修管理** | 1d | 2017-05-16 | 2017-05-16 |  | 36d |  |
| 373 |  | 车辆维修历史查询 | 1d | 2017-05-16 | 2017-05-16 |  | 36d | start no earlier than 2017-05-16 |
| 374 | WBS-4.1.2.163.63 | **配件管理** | 1d | 2017-05-17 | 2017-05-17 |  | 35d |  |
| 375 |  | 呆滞品发布信息查询 | 1d | 2017-05-17 | 2017-05-17 |  | 35d | start no earlier than 2017-05-17 |
| 376 |  | 呆滞品交易确认 | 1d | 2017-05-17 | 2017-05-17 |  | 35d | start no earlier than 2017-05-17 |
| 377 |  | 呆滞品交易历史查询 | 1d | 2017-05-17 | 2017-05-17 |  | 35d | start no earlier than 2017-05-17 |
| 378 |  | 配件BO订单查询 | 1d | 2017-05-17 | 2017-05-17 |  | 35d | start no earlier than 2017-05-17 |
| 379 |  | 配件发票查询 | 1d | 2017-05-17 | 2017-05-17 |  | 35d | start no earlier than 2017-05-17 |
| 380 |  | 账户余额查询 | 1d | 2017-05-17 | 2017-05-17 |  | 35d | start no earlier than 2017-05-17 |
| 381 |  | 配送订单查询登记 | 1d | 2017-05-17 | 2017-05-17 |  | 35d | start no earlier than 2017-05-17 |
| 382 |  | 配件订单确认 | 1d | 2017-05-17 | 2017-05-17 |  | 35d | start no earlier than 2017-05-17 |
| 383 |  | 配件往来账查询 | 1d | 2017-05-17 | 2017-05-17 |  | 35d | start no earlier than 2017-05-17 |
| 384 |  | 配件返利发放查询 | 1d | 2017-05-17 | 2017-05-17 |  | 35d | start no earlier than 2017-05-17 |
| 385 |  | 配件返利使用查询 | 1d | 2017-05-17 | 2017-05-17 |  | 35d | start no earlier than 2017-05-17 |
| 386 | WBS-4.1.2.163.64 | **索赔管理** | 1d | 2017-05-18 | 2017-05-18 |  | 34d |  |
| 387 |  | 索赔预授权维护 | 1d | 2017-05-18 | 2017-05-18 |  | 34d | start no earlier than 2017-05-18 |
| 388 |  | 索赔预授权状态查询 | 1d | 2017-05-18 | 2017-05-18 |  | 34d | start no earlier than 2017-05-18 |
| 389 |  | 预授权维修项目查询 | 1d | 2017-05-18 | 2017-05-18 |  | 34d | start no earlier than 2017-05-18 |
| 390 |  | 预授权其他项目查询 | 1d | 2017-05-18 | 2017-05-18 |  | 34d | start no earlier than 2017-05-18 |
| 391 |  | 预授权监控配件查询 | 1d | 2017-05-18 | 2017-05-18 |  | 34d | start no earlier than 2017-05-18 |
| 392 |  | 索赔单维护 | 1d | 2017-05-18 | 2017-05-18 |  | 34d | start no earlier than 2017-05-18 |
| 393 |  | 索赔申请单状态跟踪 | 1d | 2017-05-18 | 2017-05-18 |  | 34d | start no earlier than 2017-05-18 |
| 394 |  | 索赔结算单查询 | 1d | 2017-05-18 | 2017-05-18 |  | 34d | start no earlier than 2017-05-18 |
| 395 | WBS-4.1.2.163.65 | **结算管理** | 1d | 2017-05-19 | 2017-05-19 |  | 33d |  |
| 396 |  | 发票扫描结果 | 1d | 2017-05-19 | 2017-05-19 |  | 33d | start no earlier than 2017-05-19 |
| 397 | WBS-4.1.2.163.66 | **市场活动** | 1d | 2017-05-19 | 2017-05-19 |  | 33d |  |
| 398 |  | 服务活动总结 | 1d | 2017-05-19 | 2017-05-19 |  | 33d | start no earlier than 2017-05-19 |
| 399 |  | 服务活动总结查询 | 1d | 2017-05-19 | 2017-05-19 |  | 33d | start no earlier than 2017-05-19 |
| 400 |  | 召回完成统计（DLR） | 1d | 2017-05-19 | 2017-05-19 |  | 33d | start no earlier than 2017-05-19 |
| 401 |  | 召回车辆配件满足率（DLR） | 1d | 2017-05-19 | 2017-05-19 |  | 33d | start no earlier than 2017-05-19 |
| 402 |  | 召回车辆查询 | 1d | 2017-05-19 | 2017-05-19 |  | 33d | start no earlier than 2017-05-19 |
| 403 | WBS-4.1.2.176 | **对外接口** | 163d? | 2016-11-14 | 2017-07-03 |  | 3d |  |
| 404 |  | IDE001 维修工单信息接口 | 3d | 2017-05-22 | 2017-05-24 |  | 3d | start no earlier than 2017-05-22 |
| 405 |  | IDE002 维修工单作废接口 | 3d | 2017-05-25 | 2017-05-27 | 404 | 3d |  |
| 406 |  | IDE003 维修工单完工接口 | 3d | 2017-05-31 | 2017-06-02 | 405 | 3d |  |
| 407 |  | IDE004 维修工单结算接口 | 3d | 2017-06-05 | 2017-06-07 | 406 | 3d |  |
| 408 |  | IDE005 维修预约单信息接口 | 3d | 2017-06-08 | 2017-06-12 | 407 | 3d |  |
| 409 |  | IDE006 维修预约单取消预约接口 | 3d | 2017-06-13 | 2017-06-15 | 408 | 3d |  |
| 410 |  | DTW001 电子结算单结算上报接口 | 3d | 2017-06-16 | 2017-06-20 | 409 | 3d |  |
| 411 |  | DTW002 电子结算单取消结算上报接口 | 3d | 2017-06-21 | 2017-06-23 | 410 | 3d |  |
| 412 |  | MicroMsgBookingConfirmImpl（微信预约时间确认(DMS调用)） | 3d | 2017-06-26 | 2017-06-28 | 411 | 3d |  |
| 413 |  | MicroMsgBookingFeedbackImpl 微信预约状态确认(DMS调用) | 3d | 2017-06-29 | 2017-07-03 | 412 | 3d |  |

## Version 2 (saved 2017-05-19)

Last finish stays 2017-07-06.

Changed:

| ID | Task | Start | Complete | Total float |
| --- | --- | --- | --- | --- |
| 1 | **开发** |  | 32% → 33% |  |
| 2 | **功能开发** |  | 32% → 33% |  |
| 3 | **DMS售后模块** |  | 32% → 33% |  |
| 93 | **配件管理** |  | 67% → 70% |  |
| 106 | 调拨出库 |  | 20% → 45% |  |
| 107 | 借出登记 |  | 95% → 96% | 51.46d → 52.96d |
| 108 | 借进归还 |  | 40% → 80% |  |
| 121 | 盘点差异分析 |  | 65% → 80% | 40.84d → 40.98d |
| 132 | 三包预警缺料明细查询 | 2017-05-05 A | 0% → 70% |  |
| 154 | **市场活动** |  | 63% → 86% |  |
| 155 | 服务活动管理 |  | 45% → 80% |  |
